# VTN_BCN_Schedule_v2.0.0

Schedule from MS Project, 2011-08-05 to 2012-06-01, costs in ₫, A marks actual dates.
ctin

## Calendars

- Standard: Mon-Fri 08:00-12:00, 13:00-17:00; Sat-Sun off. Exceptions (off unless hours are given): 2012-01-23 to 2012-01-31 (Nghỉ tết), 2012-04-02 (Giỗ tổ), 2012-04-30 (Lễ 30/4), 2012-05-01 (Lễ 1/5).

## Resources

| Resource | Rate |
| --- | --- |
| Hải VA | 75000 |
| Thắng HX | 75000 |
| Hiếu NV | 75000 |
| Anh VTQ | 31250 |
| Customer |  |
| Tuệ TT | 156250 |
| Minh NC | 37500 |
| Yến NH | 50000 |
| Hoàn NT | 62500 |
| Vinh NQ | 112500 |
| Project Team | 62500 |
| Thắng VM |  |
| Nghi NH |  |

## Schedule

| ID | WBS | Task | Duration | Start | Finish | Predecessors | Complete | Remaining | Baseline 1 start | Baseline 1 finish | Total slack | Free slack | Constraint | Resources | Work | Actual work | Cost | Actual cost | Text1 | Text2 |
| --- | --- | --- | --- | --- | --- | --- | --- | --- | --- | --- | --- | --- | --- | --- | --- | --- | --- | --- | --- | --- |
| 1 | 1 | **CITT_Mediation - Project Schedule** | 205.12d? | 2011-08-05 08:00 A | 2012-06-01 09:00 |  | 27% | 149.77d? | 2011-08-05 08:00 | 2012-06-08 09:20 | 0d |  |  |  | 3858h | 790h | 183,266,664.84 | 45,224,998.94 |  |  |
| 2 | 1.1 | **Configuration Management** | 174.83d | 2011-08-08 13:00 A | 2012-04-19 10:40 | 10 | 60% | 69.93d | 2011-08-08 13:00 | 2012-06-04 09:20 | 24.79d |  |  |  | 40h | 24h | 1,499,999.94 | 899,999.94 |  |  |
| 3 | 1.1.1 | Setup SVN | 0.5d | 2011-08-08 13:00 A | 2011-08-08 17:00 A |  | 100% |  | 2011-08-08 13:00 | 2011-08-08 17:00 |  |  |  | Minh NC | 4h | 4h | 149,999.99 | 149,999.99 | CM | 240 |
| 4 | 1.1.2 | Setup Visual SVN | 0.5d | 2011-08-09 08:00 A | 2011-08-09 12:00 A | 3 | 100% |  | 2011-08-09 08:00 | 2011-08-09 12:00 |  |  |  | Minh NC | 4h | 4h | 149,999.99 | 149,999.99 | CM | 240 |
| 5 | 1.1.3 | Start-up baseline | 2d | 2011-09-23 13:00 A | 2011-09-27 12:00 A | 16 | 100% |  | 2011-09-23 13:00 | 2011-09-27 12:00 |  |  |  | Minh NC | 16h | 16h | 599,999.96 | 599,999.96 | CM | 960 |
| 6 | 1.1.4 | Construction baseline | 1d | 2012-02-02 08:00 | 2012-02-02 17:00 | 192 |  |  | 2012-03-14 15:40 | 2012-03-15 15:40 | 75.62d | 3.25d |  | Minh NC | 8h |  | 300,000 |  |  | 480 |
| 7 | 1.1.5 | Wrap-up baseline | 1d | 2012-04-18 10:40 | 2012-04-19 10:40 | 113 |  |  | 2012-06-01 09:20 | 2012-06-04 09:20 | 24.79d | 0d |  | Minh NC | 8h |  | 300,000 |  |  | 480 |
| 8 | 1.2 | **Project Management** | 205.12d | 2011-08-05 08:00 A | 2012-06-01 09:00 |  | 43% | 116.93d | 2011-08-05 08:00 | 2012-06-01 09:20 | 0d |  |  |  | 538h | 146h | 34,866,666.35 | 9,924,999.76 |  | 480 |
| 9 | 1.2.1 | Quyết định khởi tạo dự án | 1d | 2011-08-05 08:00 | 2011-08-05 17:00 |  |  |  | 2011-08-05 08:00 | 2011-08-05 17:00 | 62.72d | 0d | start no earlier than 2011-08-05 08:00 | Tuệ TT | 8h |  | 1,249,999.92 |  |  | 480 |
| 10 | 1.2.2 | Kick-off Meeting | 0.5d | 2011-08-08 08:00 | 2011-08-08 12:00 | 9 |  |  | 2011-08-08 08:00 | 2011-08-08 12:00 | 62.72d | 0d |  | Hải VA; Anh VTQ; Hiếu NV; Minh NC; Thắng VM; Tuệ TT; Yến NH | 28h |  | 1,700,000 |  | PM | 240 |
| 11 | 1.2.3 | **Project Planning** | 34d | 2011-08-08 13:00 A | 2011-09-23 12:00 A |  | 100% |  | 2011-08-08 13:00 | 2011-09-23 12:00 |  |  |  |  | 72h | 72h | 5,199,999.84 | 5,199,999.84 |  |  |
| 12 | 1.2.3.1 | Create Project plan | 3d | 2011-08-08 13:00 A | 2011-08-11 12:00 A | 10 | 100% |  | 2011-08-08 13:00 | 2011-08-11 12:00 |  |  |  | Hải VA | 24h | 24h | 1,800,000 | 1,800,000 | PM | 1440 |
| 13 | 1.2.3.2 | Review Project plan | 1d | 2011-08-11 13:00 A | 2011-08-12 12:00 A | 12 | 100% |  | 2011-08-11 13:00 | 2011-08-12 12:00 |  |  |  | Nghi NH; Yến NH; Hải VA | 16h | 16h | 1,000,000 | 1,000,000 | PM | 480 |
| 14 | 1.2.3.3 | Update Project Plan | 1d | 2011-08-12 13:00 A | 2011-08-15 12:00 A | 13 | 100% |  | 2011-08-12 13:00 | 2011-08-15 12:00 |  |  |  | Hải VA | 8h | 8h | 599,999.96 | 599,999.96 | PM | 480 |
| 15 | 1.2.3.4 | Estimate UCP | 2d | 2011-08-23 08:00 A | 2011-08-24 17:00 A | 129 | 100% |  | 2011-08-23 08:00 | 2011-08-24 17:00 |  |  |  | Hải VA | 16h | 16h | 1,199,999.92 | 1,199,999.92 |  | 960 |
| 16 | 1.2.3.5 | Update Estimation | 1d | 2011-09-22 13:00 A | 2011-09-23 12:00 A | 153 | 100% |  | 2011-09-22 13:00 | 2011-09-23 12:00 |  |  |  | Hải VA | 8h | 8h | 599,999.96 | 599,999.96 | PM | 480 |
| 17 | 1.2.4 | **Milestones** | 125.25d | 2011-09-23 13:00 A | 2012-03-27 15:00 |  | 33% | 83.5d | 2011-09-23 13:00 | 2012-05-11 13:40 | 41.38d |  |  |  | 54h | 18h | 3,674,999.92 | 1,224,999.92 |  |  |
| 18 | 1.2.4.1 | **Initiation & definition** | 1.25d | 2011-09-23 13:00 A | 2011-09-26 15:00 A |  | 100% |  | 2011-09-23 13:00 | 2011-09-26 15:00 |  |  |  |  | 18h | 18h | 1,224,999.92 | 1,224,999.92 |  |  |
| 19 | 1.2.4.1.1 | Lập Báo cáo milestone | 1d | 2011-09-23 13:00 A | 2011-09-26 12:00 A | 137, 16 | 100% |  | 2011-09-23 13:00 | 2011-09-26 12:00 |  |  |  | Hải VA | 8h | 8h | 599,999.96 | 599,999.96 |  | 480 |
| 20 | 1.2.4.1.2 | Meeting Milestone | 0.25d | 2011-09-26 13:00 A | 2011-09-26 15:00 A | 19 | 100% |  | 2011-09-26 13:00 | 2011-09-26 15:00 |  |  |  | Project Team | 10h | 10h | 624,999.96 | 624,999.96 |  | 120 |
| 21 | 1.2.4.2 | **Solution & Construction** | 1.25d | 2012-02-02 08:00 | 2012-02-03 10:00 |  |  |  | 2012-03-14 15:40 | 2012-03-16 08:40 | 72.38d | 0d |  |  | 18h |  | 1,225,000 |  |  |  |
| 22 | 1.2.4.2.1 | Lập Báo cáo milestone | 1d | 2012-02-02 08:00 | 2012-02-02 17:00 | 192 |  |  | 2012-03-14 15:40 | 2012-03-15 15:40 | 72.38d | 0d |  | Hải VA | 8h |  | 600,000 |  |  | 480 |
| 23 | 1.2.4.2.2 | Meeting Milestone | 0.25d | 2012-02-03 08:00 | 2012-02-03 10:00 | 22 |  |  | 2012-03-15 15:40 | 2012-03-16 08:40 | 72.38d |  |  | Project Team | 10h |  | 625,000 |  |  | 120 |
| 24 | 1.2.4.3 | **Transition & Termination** | 1.25d | 2012-03-26 13:00 | 2012-03-27 15:00 |  |  |  | 2012-05-10 10:40 | 2012-05-11 13:40 | 41.38d | 0d |  |  | 18h |  | 1,225,000 |  |  |  |
| 25 | 1.2.4.3.1 | Lập Báo cáo milestone | 1d | 2012-03-26 13:00 | 2012-03-27 12:00 | 263 |  |  | 2012-05-10 10:40 | 2012-05-11 10:40 | 41.38d | 0d |  | Hải VA | 8h |  | 600,000 |  |  | 480 |
| 26 | 1.2.4.3.2 | Meeting Milestone | 0.25d | 2012-03-27 13:00 | 2012-03-27 15:00 | 25 |  |  | 2012-05-11 10:40 | 2012-05-11 13:40 | 41.38d |  |  | Project Team | 10h |  | 625,000 |  |  | 120 |

| ID | WBS | Task | Duration | Start | Finish | Complete | Remaining | Baseline 1 start | Baseline 1 finish | Total slack | Constraint | Resources | Work | Actual work | Cost | Actual cost | Text2 |
| --- | --- | --- | --- | --- | --- | --- | --- | --- | --- | --- | --- | --- | --- | --- | --- | --- | --- |
| 27 | 1.2.5 | **Tracking & Weekly Report** | 200.12d | 2011-08-12 08:00 A | 2012-06-01 09:00 | 17% | 166.77d | 2011-08-12 08:00 | 2012-06-01 09:00 | 0d |  |  | 168h | 28h | 10,500,000 | 1,750,000 |  |
| 28 | 1.2.5.1 | Tracking & Weekly Report 1 | 1h | 2011-08-12 08:00 A | 2011-08-12 09:00 A | 100% |  | 2011-08-12 08:00 | 2011-08-12 09:00 |  | start no earlier than 2011-08-12 08:00 | Project Team | 4h | 4h | 250,000 | 250,000 | 60 |
| 29 | 1.2.5.2 | Tracking & Weekly Report 2 | 1h | 2011-08-19 08:00 A | 2011-08-19 09:00 A | 100% |  | 2011-08-19 08:00 | 2011-08-19 09:00 |  | start no earlier than 2011-08-19 08:00 | Project Team | 4h | 4h | 250,000 | 250,000 | 60 |
| 30 | 1.2.5.3 | Tracking & Weekly Report 3 | 1h | 2011-08-26 08:00 A | 2011-08-26 09:00 A | 100% |  | 2011-08-26 08:00 | 2011-08-26 09:00 |  | start no earlier than 2011-08-26 08:00 | Project Team | 4h | 4h | 250,000 | 250,000 | 60 |
| 31 | 1.2.5.4 | Tracking & Weekly Report 4 | 1h | 2011-09-02 08:00 A | 2011-09-02 09:00 A | 100% |  | 2011-09-02 08:00 | 2011-09-02 09:00 |  | start no earlier than 2011-09-02 08:00 | Project Team | 4h | 4h | 250,000 | 250,000 | 60 |
| 32 | 1.2.5.5 | Tracking & Weekly Report 5 | 1h | 2011-09-09 08:00 A | 2011-09-09 09:00 A | 100% |  | 2011-09-09 08:00 | 2011-09-09 09:00 |  | start no earlier than 2011-09-09 08:00 | Project Team | 4h | 4h | 250,000 | 250,000 | 60 |
| 33 | 1.2.5.6 | Tracking & Weekly Report 6 | 1h | 2011-09-16 08:00 A | 2011-09-16 09:00 A | 100% |  | 2011-09-16 08:00 | 2011-09-16 09:00 |  | start no earlier than 2011-09-16 08:00 | Project Team | 4h | 4h | 250,000 | 250,000 | 60 |
| 34 | 1.2.5.7 | Tracking & Weekly Report 7 | 1h | 2011-09-23 08:00 A | 2011-09-23 09:00 A | 100% |  | 2011-09-23 08:00 | 2011-09-23 09:00 |  | start no earlier than 2011-09-23 08:00 | Project Team | 4h | 4h | 250,000 | 250,000 | 60 |
| 35 | 1.2.5.8 | Tracking & Weekly Report 8 | 1h | 2011-09-30 08:00 | 2011-09-30 09:00 |  |  | 2011-09-30 08:00 | 2011-09-30 09:00 | 165d | start no earlier than 2011-09-30 08:00 | Project Team | 4h |  | 250,000 |  | 60 |
| 36 | 1.2.5.9 | Tracking & Weekly Report 9 | 1h | 2011-10-07 08:00 | 2011-10-07 09:00 |  |  | 2011-10-07 08:00 | 2011-10-07 09:00 | 160d | start no earlier than 2011-10-07 08:00 | Project Team | 4h |  | 250,000 |  | 60 |
| 37 | 1.2.5.10 | Tracking & Weekly Report 10 | 1h | 2011-10-14 08:00 | 2011-10-14 09:00 |  |  | 2011-10-14 08:00 | 2011-10-14 09:00 | 155d | start no earlier than 2011-10-14 08:00 | Project Team | 4h |  | 250,000 |  | 60 |
| 38 | 1.2.5.11 | Tracking & Weekly Report 11 | 1h | 2011-10-21 08:00 | 2011-10-21 09:00 |  |  | 2011-10-21 08:00 | 2011-10-21 09:00 | 150d | start no earlier than 2011-10-21 08:00 | Project Team | 4h |  | 250,000 |  | 60 |
| 39 | 1.2.5.12 | Tracking & Weekly Report 12 | 1h | 2011-10-28 08:00 | 2011-10-28 09:00 |  |  | 2011-10-28 08:00 | 2011-10-28 09:00 | 145d | start no earlier than 2011-10-28 08:00 | Project Team | 4h |  | 250,000 |  | 60 |
| 40 | 1.2.5.13 | Tracking & Weekly Report 13 | 1h | 2011-11-04 08:00 | 2011-11-04 09:00 |  |  | 2011-11-04 08:00 | 2011-11-04 09:00 | 140d | start no earlier than 2011-11-04 08:00 | Project Team | 4h |  | 250,000 |  | 60 |
| 41 | 1.2.5.14 | Tracking & Weekly Report 14 | 1h | 2011-11-11 08:00 | 2011-11-11 09:00 |  |  | 2011-11-11 08:00 | 2011-11-11 09:00 | 135d | start no earlier than 2011-11-11 08:00 | Project Team | 4h |  | 250,000 |  | 60 |
| 42 | 1.2.5.15 | Tracking & Weekly Report 15 | 1h | 2011-11-18 08:00 | 2011-11-18 09:00 |  |  | 2011-11-18 08:00 | 2011-11-18 09:00 | 130d | start no earlier than 2011-11-18 08:00 | Project Team | 4h |  | 250,000 |  | 60 |
| 43 | 1.2.5.16 | Tracking & Weekly Report 16 | 1h | 2011-11-25 08:00 | 2011-11-25 09:00 |  |  | 2011-11-25 08:00 | 2011-11-25 09:00 | 125d | start no earlier than 2011-11-25 08:00 | Project Team | 4h |  | 250,000 |  | 60 |
| 44 | 1.2.5.17 | Tracking & Weekly Report 17 | 1h | 2011-12-02 08:00 | 2011-12-02 09:00 |  |  | 2011-12-02 08:00 | 2011-12-02 09:00 | 120d | start no earlier than 2011-12-02 08:00 | Project Team | 4h |  | 250,000 |  | 60 |
| 45 | 1.2.5.18 | Tracking & Weekly Report 18 | 1h | 2011-12-09 08:00 | 2011-12-09 09:00 |  |  | 2011-12-09 08:00 | 2011-12-09 09:00 | 115d | start no earlier than 2011-12-09 08:00 | Project Team | 4h |  | 250,000 |  | 60 |
| 46 | 1.2.5.19 | Tracking & Weekly Report 19 | 1h | 2011-12-16 08:00 | 2011-12-16 09:00 |  |  | 2011-12-16 08:00 | 2011-12-16 09:00 | 110d | start no earlier than 2011-12-16 08:00 | Project Team | 4h |  | 250,000 |  | 60 |
| 47 | 1.2.5.20 | Tracking & Weekly Report 20 | 1h | 2011-12-23 08:00 | 2011-12-23 09:00 |  |  | 2011-12-23 08:00 | 2011-12-23 09:00 | 105d | start no earlier than 2011-12-23 08:00 | Project Team | 4h |  | 250,000 |  | 60 |
| 48 | 1.2.5.21 | Tracking & Weekly Report 21 | 1h | 2011-12-30 08:00 | 2011-12-30 09:00 |  |  | 2011-12-30 08:00 | 2011-12-30 09:00 | 100d | start no earlier than 2011-12-30 08:00 | Project Team | 4h |  | 250,000 |  | 60 |
| 49 | 1.2.5.22 | Tracking & Weekly Report 22 | 1h | 2012-01-06 08:00 | 2012-01-06 09:00 |  |  | 2012-01-06 08:00 | 2012-01-06 09:00 | 95d | start no earlier than 2012-01-06 08:00 | Project Team | 4h |  | 250,000 |  | 60 |
| 50 | 1.2.5.23 | Tracking & Weekly Report 23 | 1h | 2012-01-13 08:00 | 2012-01-13 09:00 |  |  | 2012-01-13 08:00 | 2012-01-13 09:00 | 90d | start no earlier than 2012-01-13 08:00 | Project Team | 4h |  | 250,000 |  | 60 |
| 51 | 1.2.5.24 | Tracking & Weekly Report 24 | 1h | 2012-01-20 08:00 | 2012-01-20 09:00 |  |  | 2012-01-20 08:00 | 2012-01-20 09:00 | 85d | start no earlier than 2012-01-20 08:00 | Project Team | 4h |  | 250,000 |  | 60 |
| 52 | 1.2.5.25 | Tracking & Weekly Report 25 | 1h | 2012-02-03 08:00 | 2012-02-03 09:00 |  |  | 2012-02-03 08:00 | 2012-02-03 09:00 | 82d | start no earlier than 2012-02-03 08:00 | Project Team | 4h |  | 250,000 |  | 60 |
| 53 | 1.2.5.26 | Tracking & Weekly Report 26 | 1h | 2012-02-10 08:00 | 2012-02-10 09:00 |  |  | 2012-02-10 08:00 | 2012-02-10 09:00 | 77d | start no earlier than 2012-02-10 08:00 | Project Team | 4h |  | 250,000 |  | 60 |
| 54 | 1.2.5.27 | Tracking & Weekly Report 27 | 1h | 2012-02-17 08:00 | 2012-02-17 09:00 |  |  | 2012-02-17 08:00 | 2012-02-17 09:00 | 72d | start no earlier than 2012-02-17 08:00 | Project Team | 4h |  | 250,000 |  | 60 |
| 55 | 1.2.5.28 | Tracking & Weekly Report 28 | 1h | 2012-02-24 08:00 | 2012-02-24 09:00 |  |  | 2012-02-24 08:00 | 2012-02-24 09:00 | 67d | start no earlier than 2012-02-24 08:00 | Project Team | 4h |  | 250,000 |  | 60 |
| 56 | 1.2.5.29 | Tracking & Weekly Report 29 | 1h | 2012-03-02 08:00 | 2012-03-02 09:00 |  |  | 2012-03-02 08:00 | 2012-03-02 09:00 | 62d | start no earlier than 2012-03-02 08:00 | Project Team | 4h |  | 250,000 |  | 60 |
| 57 | 1.2.5.30 | Tracking & Weekly Report 30 | 1h | 2012-03-09 08:00 | 2012-03-09 09:00 |  |  | 2012-03-09 08:00 | 2012-03-09 09:00 | 57d | start no earlier than 2012-03-09 08:00 | Project Team | 4h |  | 250,000 |  | 60 |
| 58 | 1.2.5.31 | Tracking & Weekly Report 31 | 1h | 2012-03-16 08:00 | 2012-03-16 09:00 |  |  | 2012-03-16 08:00 | 2012-03-16 09:00 | 52d | start no earlier than 2012-03-16 08:00 | Project Team | 4h |  | 250,000 |  | 60 |
| 59 | 1.2.5.32 | Tracking & Weekly Report 32 | 1h | 2012-03-23 08:00 | 2012-03-23 09:00 |  |  | 2012-03-23 08:00 | 2012-03-23 09:00 | 47d | start no earlier than 2012-03-23 08:00 | Project Team | 4h |  | 250,000 |  | 60 |
| 60 | 1.2.5.33 | Tracking & Weekly Report 33 | 1h | 2012-03-30 08:00 | 2012-03-30 09:00 |  |  | 2012-03-30 08:00 | 2012-03-30 09:00 | 42d | start no earlier than 2012-03-30 08:00 | Project Team | 4h |  | 250,000 |  | 60 |
| 61 | 1.2.5.34 | Tracking & Weekly Report 34 | 1h | 2012-04-06 08:00 | 2012-04-06 09:00 |  |  | 2012-04-06 08:00 | 2012-04-06 09:00 | 38d | start no earlier than 2012-04-06 08:00 | Project Team | 4h |  | 250,000 |  | 60 |
| 62 | 1.2.5.35 | Tracking & Weekly Report 35 | 1h | 2012-04-13 08:00 | 2012-04-13 09:00 |  |  | 2012-04-13 08:00 | 2012-04-13 09:00 | 33d | start no earlier than 2012-04-13 08:00 | Project Team | 4h |  | 250,000 |  | 60 |
| 63 | 1.2.5.36 | Tracking & Weekly Report 36 | 1h | 2012-04-20 08:00 | 2012-04-20 09:00 |  |  | 2012-04-20 08:00 | 2012-04-20 09:00 | 28d | start no earlier than 2012-04-20 08:00 | Project Team | 4h |  | 250,000 |  | 60 |
| 64 | 1.2.5.37 | Tracking & Weekly Report 37 | 1h | 2012-04-27 08:00 | 2012-04-27 09:00 |  |  | 2012-04-27 08:00 | 2012-04-27 09:00 | 23d | start no earlier than 2012-04-27 08:00 | Project Team | 4h |  | 250,000 |  | 60 |
| 65 | 1.2.5.38 | Tracking & Weekly Report 38 | 1h | 2012-05-04 08:00 | 2012-05-04 09:00 |  |  | 2012-05-04 08:00 | 2012-05-04 09:00 | 20d | start no earlier than 2012-05-04 08:00 | Project Team | 4h |  | 250,000 |  | 60 |
| 66 | 1.2.5.39 | Tracking & Weekly Report 39 | 1h | 2012-05-11 08:00 | 2012-05-11 09:00 |  |  | 2012-05-11 08:00 | 2012-05-11 09:00 | 15d | start no earlier than 2012-05-11 08:00 | Project Team | 4h |  | 250,000 |  | 60 |
| 67 | 1.2.5.40 | Tracking & Weekly Report 40 | 1h | 2012-05-18 08:00 | 2012-05-18 09:00 |  |  | 2012-05-18 08:00 | 2012-05-18 09:00 | 10d | start no earlier than 2012-05-18 08:00 | Project Team | 4h |  | 250,000 |  | 60 |
| 68 | 1.2.5.41 | Tracking & Weekly Report 41 | 1h | 2012-05-25 08:00 | 2012-05-25 09:00 |  |  | 2012-05-25 08:00 | 2012-05-25 09:00 | 5d | start no earlier than 2012-05-25 08:00 | Project Team | 4h |  | 250,000 |  | 60 |
| 69 | 1.2.5.42 | Tracking & Weekly Report 42 | 1h | 2012-06-01 08:00 | 2012-06-01 09:00 |  |  | 2012-06-01 08:00 | 2012-06-01 09:00 | 0d | start no earlier than 2012-06-01 08:00 | Project Team | 4h |  | 250,000 |  | 60 |

| ID | WBS | Task | Duration | Start | Finish | Complete | Remaining | Baseline 1 start | Baseline 1 finish | Total slack | Constraint | Resources | Work | Actual work | Cost | Actual cost | Text2 |
| --- | --- | --- | --- | --- | --- | --- | --- | --- | --- | --- | --- | --- | --- | --- | --- | --- | --- |
| 70 | 1.2.6 | **Weekly meeting** | 200.12d | 2011-08-12 08:00 A | 2012-06-01 09:00 | 17% | 166.77d | 2011-08-12 08:00 | 2012-06-01 09:00 | 0d |  |  | 168h | 28h | 10,500,000 | 1,750,000 |  |
| 71 | 1.2.6.1 | Weekly meeting 1 | 1h | 2011-08-12 08:00 A | 2011-08-12 09:00 A | 100% |  | 2011-08-12 08:00 | 2011-08-12 09:00 |  | start no earlier than 2011-08-12 08:00 | Project Team | 4h | 4h | 250,000 | 250,000 | 60 |
| 72 | 1.2.6.2 | Weekly meeting 2 | 1h | 2011-08-19 08:00 A | 2011-08-19 09:00 A | 100% |  | 2011-08-19 08:00 | 2011-08-19 09:00 |  | start no earlier than 2011-08-19 08:00 | Project Team | 4h | 4h | 250,000 | 250,000 | 60 |
| 73 | 1.2.6.3 | Weekly meeting 3 | 1h | 2011-08-26 08:00 A | 2011-08-26 09:00 A | 100% |  | 2011-08-26 08:00 | 2011-08-26 09:00 |  | start no earlier than 2011-08-26 08:00 | Project Team | 4h | 4h | 250,000 | 250,000 | 60 |
| 74 | 1.2.6.4 | Weekly meeting 4 | 1h | 2011-09-02 08:00 A | 2011-09-02 09:00 A | 100% |  | 2011-09-02 08:00 | 2011-09-02 09:00 |  | start no earlier than 2011-09-02 08:00 | Project Team | 4h | 4h | 250,000 | 250,000 | 60 |
| 75 | 1.2.6.5 | Weekly meeting 5 | 1h | 2011-09-09 08:00 A | 2011-09-09 09:00 A | 100% |  | 2011-09-09 08:00 | 2011-09-09 09:00 |  | start no earlier than 2011-09-09 08:00 | Project Team | 4h | 4h | 250,000 | 250,000 | 60 |
| 76 | 1.2.6.6 | Weekly meeting 6 | 1h | 2011-09-16 08:00 A | 2011-09-16 09:00 A | 100% |  | 2011-09-16 08:00 | 2011-09-16 09:00 |  | start no earlier than 2011-09-16 08:00 | Project Team | 4h | 4h | 250,000 | 250,000 | 60 |
| 77 | 1.2.6.7 | Weekly meeting 7 | 1h | 2011-09-23 08:00 A | 2011-09-23 09:00 A | 100% |  | 2011-09-23 08:00 | 2011-09-23 09:00 |  | start no earlier than 2011-09-23 08:00 | Project Team | 4h | 4h | 250,000 | 250,000 | 60 |
| 78 | 1.2.6.8 | Weekly meeting 8 | 1h | 2011-09-30 08:00 | 2011-09-30 09:00 |  |  | 2011-09-30 08:00 | 2011-09-30 09:00 | 165d | start no earlier than 2011-09-30 08:00 | Project Team | 4h |  | 250,000 |  | 60 |
| 79 | 1.2.6.9 | Weekly meeting 9 | 1h | 2011-10-07 08:00 | 2011-10-07 09:00 |  |  | 2011-10-07 08:00 | 2011-10-07 09:00 | 160d | start no earlier than 2011-10-07 08:00 | Project Team | 4h |  | 250,000 |  | 60 |
| 80 | 1.2.6.10 | Weekly meeting 10 | 1h | 2011-10-14 08:00 | 2011-10-14 09:00 |  |  | 2011-10-14 08:00 | 2011-10-14 09:00 | 155d | start no earlier than 2011-10-14 08:00 | Project Team | 4h |  | 250,000 |  | 60 |
| 81 | 1.2.6.11 | Weekly meeting 11 | 1h | 2011-10-21 08:00 | 2011-10-21 09:00 |  |  | 2011-10-21 08:00 | 2011-10-21 09:00 | 150d | start no earlier than 2011-10-21 08:00 | Project Team | 4h |  | 250,000 |  | 60 |
| 82 | 1.2.6.12 | Weekly meeting 12 | 1h | 2011-10-28 08:00 | 2011-10-28 09:00 |  |  | 2011-10-28 08:00 | 2011-10-28 09:00 | 145d | start no earlier than 2011-10-28 08:00 | Project Team | 4h |  | 250,000 |  | 60 |
| 83 | 1.2.6.13 | Weekly meeting 13 | 1h | 2011-11-04 08:00 | 2011-11-04 09:00 |  |  | 2011-11-04 08:00 | 2011-11-04 09:00 | 140d | start no earlier than 2011-11-04 08:00 | Project Team | 4h |  | 250,000 |  | 60 |
| 84 | 1.2.6.14 | Weekly meeting 14 | 1h | 2011-11-11 08:00 | 2011-11-11 09:00 |  |  | 2011-11-11 08:00 | 2011-11-11 09:00 | 135d | start no earlier than 2011-11-11 08:00 | Project Team | 4h |  | 250,000 |  | 60 |
| 85 | 1.2.6.15 | Weekly meeting 15 | 1h | 2011-11-18 08:00 | 2011-11-18 09:00 |  |  | 2011-11-18 08:00 | 2011-11-18 09:00 | 130d | start no earlier than 2011-11-18 08:00 | Project Team | 4h |  | 250,000 |  | 60 |
| 86 | 1.2.6.16 | Weekly meeting 16 | 1h | 2011-11-25 08:00 | 2011-11-25 09:00 |  |  | 2011-11-25 08:00 | 2011-11-25 09:00 | 125d | start no earlier than 2011-11-25 08:00 | Project Team | 4h |  | 250,000 |  | 60 |
| 87 | 1.2.6.17 | Weekly meeting 17 | 1h | 2011-12-02 08:00 | 2011-12-02 09:00 |  |  | 2011-12-02 08:00 | 2011-12-02 09:00 | 120d | start no earlier than 2011-12-02 08:00 | Project Team | 4h |  | 250,000 |  | 60 |
| 88 | 1.2.6.18 | Weekly meeting 18 | 1h | 2011-12-09 08:00 | 2011-12-09 09:00 |  |  | 2011-12-09 08:00 | 2011-12-09 09:00 | 115d | start no earlier than 2011-12-09 08:00 | Project Team | 4h |  | 250,000 |  | 60 |
| 89 | 1.2.6.19 | Weekly meeting 19 | 1h | 2011-12-16 08:00 | 2011-12-16 09:00 |  |  | 2011-12-16 08:00 | 2011-12-16 09:00 | 110d | start no earlier than 2011-12-16 08:00 | Project Team | 4h |  | 250,000 |  | 60 |
| 90 | 1.2.6.20 | Weekly meeting 20 | 1h | 2011-12-23 08:00 | 2011-12-23 09:00 |  |  | 2011-12-23 08:00 | 2011-12-23 09:00 | 105d | start no earlier than 2011-12-23 08:00 | Project Team | 4h |  | 250,000 |  | 60 |
| 91 | 1.2.6.21 | Weekly meeting 21 | 1h | 2011-12-30 08:00 | 2011-12-30 09:00 |  |  | 2011-12-30 08:00 | 2011-12-30 09:00 | 100d | start no earlier than 2011-12-30 08:00 | Project Team | 4h |  | 250,000 |  | 60 |
| 92 | 1.2.6.22 | Weekly meeting 22 | 1h | 2012-01-06 08:00 | 2012-01-06 09:00 |  |  | 2012-01-06 08:00 | 2012-01-06 09:00 | 95d | start no earlier than 2012-01-06 08:00 | Project Team | 4h |  | 250,000 |  | 60 |
| 93 | 1.2.6.23 | Weekly meeting 23 | 1h | 2012-01-13 08:00 | 2012-01-13 09:00 |  |  | 2012-01-13 08:00 | 2012-01-13 09:00 | 90d | start no earlier than 2012-01-13 08:00 | Project Team | 4h |  | 250,000 |  | 60 |
| 94 | 1.2.6.24 | Weekly meeting 24 | 1h | 2012-01-20 08:00 | 2012-01-20 09:00 |  |  | 2012-01-20 08:00 | 2012-01-20 09:00 | 85d | start no earlier than 2012-01-20 08:00 | Project Team | 4h |  | 250,000 |  | 60 |
| 95 | 1.2.6.25 | Weekly meeting 25 | 1h | 2012-02-03 08:00 | 2012-02-03 09:00 |  |  | 2012-02-03 08:00 | 2012-02-03 09:00 | 82d | start no earlier than 2012-02-03 08:00 | Project Team | 4h |  | 250,000 |  | 60 |
| 96 | 1.2.6.26 | Weekly meeting 26 | 1h | 2012-02-10 08:00 | 2012-02-10 09:00 |  |  | 2012-02-10 08:00 | 2012-02-10 09:00 | 77d | start no earlier than 2012-02-10 08:00 | Project Team | 4h |  | 250,000 |  | 60 |
| 97 | 1.2.6.27 | Weekly meeting 27 | 1h | 2012-02-17 08:00 | 2012-02-17 09:00 |  |  | 2012-02-17 08:00 | 2012-02-17 09:00 | 72d | start no earlier than 2012-02-17 08:00 | Project Team | 4h |  | 250,000 |  | 60 |
| 98 | 1.2.6.28 | Weekly meeting 28 | 1h | 2012-02-24 08:00 | 2012-02-24 09:00 |  |  | 2012-02-24 08:00 | 2012-02-24 09:00 | 67d | start no earlier than 2012-02-24 08:00 | Project Team | 4h |  | 250,000 |  | 60 |
| 99 | 1.2.6.29 | Weekly meeting 29 | 1h | 2012-03-02 08:00 | 2012-03-02 09:00 |  |  | 2012-03-02 08:00 | 2012-03-02 09:00 | 62d | start no earlier than 2012-03-02 08:00 | Project Team | 4h |  | 250,000 |  | 60 |
| 100 | 1.2.6.30 | Weekly meeting 30 | 1h | 2012-03-09 08:00 | 2012-03-09 09:00 |  |  | 2012-03-09 08:00 | 2012-03-09 09:00 | 57d | start no earlier than 2012-03-09 08:00 | Project Team | 4h |  | 250,000 |  | 60 |
| 101 | 1.2.6.31 | Weekly meeting 31 | 1h | 2012-03-16 08:00 | 2012-03-16 09:00 |  |  | 2012-03-16 08:00 | 2012-03-16 09:00 | 52d | start no earlier than 2012-03-16 08:00 | Project Team | 4h |  | 250,000 |  | 60 |
| 102 | 1.2.6.32 | Weekly meeting 32 | 1h | 2012-03-23 08:00 | 2012-03-23 09:00 |  |  | 2012-03-23 08:00 | 2012-03-23 09:00 | 47d | start no earlier than 2012-03-23 08:00 | Project Team | 4h |  | 250,000 |  | 60 |
| 103 | 1.2.6.33 | Weekly meeting 33 | 1h | 2012-03-30 08:00 | 2012-03-30 09:00 |  |  | 2012-03-30 08:00 | 2012-03-30 09:00 | 42d | start no earlier than 2012-03-30 08:00 | Project Team | 4h |  | 250,000 |  | 60 |
| 104 | 1.2.6.34 | Weekly meeting 34 | 1h | 2012-04-06 08:00 | 2012-04-06 09:00 |  |  | 2012-04-06 08:00 | 2012-04-06 09:00 | 38d | start no earlier than 2012-04-06 08:00 | Project Team | 4h |  | 250,000 |  | 60 |
| 105 | 1.2.6.35 | Weekly meeting 35 | 1h | 2012-04-13 08:00 | 2012-04-13 09:00 |  |  | 2012-04-13 08:00 | 2012-04-13 09:00 | 33d | start no earlier than 2012-04-13 08:00 | Project Team | 4h |  | 250,000 |  | 60 |
| 106 | 1.2.6.36 | Weekly meeting 36 | 1h | 2012-04-20 08:00 | 2012-04-20 09:00 |  |  | 2012-04-20 08:00 | 2012-04-20 09:00 | 28d | start no earlier than 2012-04-20 08:00 | Project Team | 4h |  | 250,000 |  | 60 |
| 107 | 1.2.6.37 | Weekly meeting 37 | 1h | 2012-04-27 08:00 | 2012-04-27 09:00 |  |  | 2012-04-27 08:00 | 2012-04-27 09:00 | 23d | start no earlier than 2012-04-27 08:00 | Project Team | 4h |  | 250,000 |  | 60 |
| 108 | 1.2.6.38 | Weekly meeting 38 | 1h | 2012-05-04 08:00 | 2012-05-04 09:00 |  |  | 2012-05-04 08:00 | 2012-05-04 09:00 | 20d | start no earlier than 2012-05-04 08:00 | Project Team | 4h |  | 250,000 |  | 60 |
| 109 | 1.2.6.39 | Weekly meeting 39 | 1h | 2012-05-11 08:00 | 2012-05-11 09:00 |  |  | 2012-05-11 08:00 | 2012-05-11 09:00 | 15d | start no earlier than 2012-05-11 08:00 | Project Team | 4h |  | 250,000 |  | 60 |
| 110 | 1.2.6.40 | Weekly meeting 40 | 1h | 2012-05-18 08:00 | 2012-05-18 09:00 |  |  | 2012-05-18 08:00 | 2012-05-18 09:00 | 10d | start no earlier than 2012-05-18 08:00 | Project Team | 4h |  | 250,000 |  | 60 |
| 111 | 1.2.6.41 | Weekly meeting 41 | 1h | 2012-05-25 08:00 | 2012-05-25 09:00 |  |  | 2012-05-25 08:00 | 2012-05-25 09:00 | 5d | start no earlier than 2012-05-25 08:00 | Project Team | 4h |  | 250,000 |  | 60 |
| 112 | 1.2.6.42 | Weekly meeting 42 | 1h | 2012-06-01 08:00 | 2012-06-01 09:00 |  |  | 2012-06-01 08:00 | 2012-06-01 09:00 | 0d | start no earlier than 2012-06-01 08:00 | Project Team | 4h |  | 250,000 |  | 60 |

| ID | WBS | Task | Duration | Start | Finish | Predecessors | Complete | Remaining | Baseline 1 start | Baseline 1 finish | Total slack | Free slack | Resources | Work | Actual work | Cost | Actual cost | Process | Sub-process | Text2 |
| --- | --- | --- | --- | --- | --- | --- | --- | --- | --- | --- | --- | --- | --- | --- | --- | --- | --- | --- | --- | --- |
| 113 | 1.2.7 | **Đóng dự án** | 1.83d | 2012-04-16 13:00 | 2012-04-18 10:40 | 274 |  |  | 2012-05-30 10:40 | 2012-06-01 09:20 | 24.79d | 0d |  | 40h |  | 2,041,666.67 |  | PM | PMC |  |
| 114 | 1.2.7.1 | Khảo sát sự hài lòng của khách hàng | 0.5d | 2012-04-16 13:00 | 2012-04-16 17:00 |  |  |  | 2012-05-30 10:40 | 2012-05-30 15:40 | 24.79d | 0d | Hải VA; Anh VTQ | 8h |  | 425,000 |  |  |  | 240 |
| 115 | 1.2.7.2 | Quy hoạch lại và lưu trữ sản phẩm dự án (tài liệu, dữ liệu v.v..) | 1d | 2012-04-17 08:00 | 2012-04-17 17:00 | 114 |  |  | 2012-05-30 15:40 | 2012-05-31 15:40 | 24.79d | 0d | Minh NC; Hải VA | 16h |  | 900,000 |  |  |  | 480 |
| 116 | 1.2.7.3 | Thực hiện bài học rút kinh nghiệm | 0.33d | 2012-04-18 08:00 | 2012-04-18 10:40 | 115 |  |  | 2012-05-31 15:40 | 2012-06-01 09:20 | 24.79d |  | Hải VA; Anh VTQ; Hiếu NV; Minh NC; Thắng VM; Yến NH | 16h |  | 716,666.67 |  |  |  | 160 |
| 117 | 1.3 | **Quality Gate** | 142.83d | 2011-09-27 13:00 | 2012-04-25 10:40 |  |  |  | 2011-09-27 13:00 | 2012-06-08 09:20 | 24.79d |  |  | 168h |  | 8,650,000 |  |  |  |  |
| 118 | 1.3.1 | **Milestone Auditing** | 125.25d | 2011-09-28 13:00 | 2012-03-30 15:00 |  |  |  | 2011-09-28 13:00 | 2012-05-16 13:40 | 41.38d |  |  | 56h |  | 2,800,000 |  |  |  |  |
| 119 | 1.3.1.1 | Initiation & definition | 2d | 2011-09-28 13:00 | 2011-09-30 12:00 | 18, 167, 162 |  |  | 2011-09-28 13:00 | 2011-09-30 12:00 | 164.62d |  | Yến NH [50%] | 8h |  | 400,000 |  |  |  | 960 |
| 120 | 1.3.1.2 | Solution & construction | 3d | 2012-02-03 10:00 | 2012-02-08 10:00 | 21 |  |  | 2012-03-16 08:40 | 2012-03-21 08:40 | 72.38d | 0d | Yến NH | 24h |  | 1,200,000 |  |  |  | 1440 |
| 121 | 1.3.1.3 | Transtion & termination | 3d | 2012-03-27 15:00 | 2012-03-30 15:00 | 24 |  |  | 2012-05-11 13:40 | 2012-05-16 13:40 | 41.38d |  | Yến NH | 24h |  | 1,200,000 |  |  |  | 1440 |
| 122 | 1.3.2 | **Base Line auditing** | 142.83d | 2011-09-27 13:00 | 2012-04-25 10:40 |  |  |  | 2011-09-27 13:00 | 2012-06-08 09:20 | 24.79d |  |  | 72h |  | 3,600,000 |  |  |  |  |
| 123 | 1.3.2.1 | Start-up baseline audit & audit pp | 2d | 2011-09-27 13:00 | 2011-09-29 12:00 | 5, 13, 136 |  |  | 2011-09-27 13:00 | 2011-09-29 12:00 | 165.62d |  | Yến NH [50%] | 8h |  | 400,000 |  |  |  | 960 |
| 124 | 1.3.2.2 | Construction baseline audit | 4d | 2012-02-08 10:00 | 2012-02-14 10:00 | 6, 120 |  |  | 2012-03-21 08:40 | 2012-03-27 08:40 | 72.38d | 0d | Yến NH | 32h |  | 1,600,000 |  |  |  | 1920 |
| 125 | 1.3.2.3 | Wrap-up baseline audit | 4d | 2012-04-19 10:40 | 2012-04-25 10:40 | 7 |  |  | 2012-06-04 09:20 | 2012-06-08 09:20 | 24.79d |  | Yến NH | 32h |  | 1,600,000 |  |  |  | 1920 |
| 126 | 1.3.3 | Internal Audit | 2.5d | 2012-02-14 10:00 | 2012-02-16 15:00 | 192, 124 |  |  | 2012-03-27 08:40 | 2012-03-29 13:40 | 72.38d |  | Hoàn NT; Yến NH | 40h |  | 2,250,000 |  |  |  | 1200 |
| 127 | 1.4 | **Phát triển hệ thống** | 154.5d? | 2011-08-08 13:00 A | 2012-03-20 17:00 | 10 | 29% | 110.36d? | 2011-08-08 13:00 | 2012-05-04 15:40 | 24.79d |  |  | 2920h | 620h | 131,349,998.55 | 34,399,999.24 |  |  | 480 |
| 128 | 1.4.1 | **Xây dựng yêu cầu** | 33.5d | 2011-08-08 13:00 A | 2011-09-22 17:00 A |  | 100% |  | 2011-08-08 13:00 | 2011-09-22 17:00 |  |  |  | 444h | 444h | 23,099,999.54 | 23,099,999.54 |  |  |  |
| 129 | 1.4.1.1 | **Xây dựng URD** | 10.5d | 2011-08-08 13:00 A | 2011-08-22 17:00 A |  | 100% |  | 2011-08-08 13:00 | 2011-08-22 17:00 |  |  |  | 116h | 116h | 7,499,999.78 | 7,499,999.78 |  |  | 480 |
| 130 | 1.4.1.1.1 | Chuẩn bị câu hỏi khảo sát | 0.5d | 2011-08-08 13:00 A | 2011-08-08 17:00 A |  | 100% |  | 2011-08-08 13:00 | 2011-08-08 17:00 |  |  | Thắng VM; Hiếu NV | 4h | 4h | 299,999.98 | 299,999.98 |  |  | 240 |
| 131 | 1.4.1.1.2 | Khảo sát yêu cầu tại CPT | 2d | 2011-08-09 08:00 A | 2011-08-10 17:00 A | 130 | 100% |  | 2011-08-09 08:00 | 2011-08-10 17:00 |  |  | Thắng VM; Hiếu NV | 16h | 16h | 1,199,999.92 | 1,199,999.92 |  |  | 960 |
| 132 | 1.4.1.1.3 | Xây dựng tài liệu URD | 3d | 2011-08-11 08:00 A | 2011-08-15 17:00 A | 131 | 100% |  | 2011-08-11 08:00 | 2011-08-15 17:00 |  |  | Thắng VM; Hiếu NV | 24h | 24h | 1,800,000 | 1,800,000 |  |  | 1440 |
| 133 | 1.4.1.1.4 | Review URD | 1d | 2011-08-16 08:00 A | 2011-08-16 17:00 A | 132 | 100% |  | 2011-08-16 08:00 | 2011-08-16 17:00 |  |  | Hải VA; Hiếu NV; Yến NH | 24h | 24h | 1,600,000 | 1,600,000 |  |  | 480 |
| 134 | 1.4.1.1.5 | Chỉnh sửa URD | 1d | 2011-08-17 08:00 A | 2011-08-17 17:00 A | 133 | 100% |  | 2011-08-17 08:00 | 2011-08-17 17:00 |  |  | Thắng VM; Hiếu NV | 8h | 8h | 599,999.96 | 599,999.96 |  |  | 480 |
| 135 | 1.4.1.1.6 | Họp chốt URD với khách hàng | 1d | 2011-08-18 08:00 A | 2011-08-18 17:00 A | 134 | 100% |  | 2011-08-18 08:00 | 2011-08-18 17:00 |  |  | Customer; Hải VA; Hiếu NV; Thắng VM | 24h | 24h | 1,199,999.92 | 1,199,999.92 |  |  | 480 |
| 136 | 1.4.1.1.7 | Final Inspection URD | 2d | 2011-08-19 08:00 A | 2011-08-22 17:00 A | 135 | 100% |  | 2011-08-19 08:00 | 2011-08-22 17:00 |  |  | Yến NH | 16h | 16h | 800,000 | 800,000 |  |  | 960 |

| ID | WBS | Task | Duration | Start | Finish | Predecessors | Complete | Remaining | Baseline 1 start | Baseline 1 finish | Total slack | Free slack | Resources | Work | Actual work | Cost | Actual cost | Text2 | Text1 |
| --- | --- | --- | --- | --- | --- | --- | --- | --- | --- | --- | --- | --- | --- | --- | --- | --- | --- | --- | --- |
| 137 | 1.4.1.2 | **Xây dựng SRS** | 23d | 2011-08-23 08:00 A | 2011-09-22 17:00 A | 129 | 100% |  | 2011-08-23 08:00 | 2011-09-22 17:00 |  |  |  | 328h | 328h | 15,599,999.76 | 15,599,999.76 | 480 |  |
| 138 | 1.4.1.2.1 | **Xây dựng tài liệu SRS** | 14d | 2011-08-23 08:00 A | 2011-09-09 17:00 A |  | 100% |  | 2011-08-23 08:00 | 2011-09-09 17:00 |  |  |  | 112h | 112h | 4,199,999.96 | 4,199,999.96 | 1440 |  |
| 139 | 1.4.1.2.1.1 | Khối Core | 8d | 2011-08-23 08:00 A | 2011-09-01 17:00 A |  | 100% |  | 2011-08-23 08:00 | 2011-09-01 17:00 |  |  | Thắng VM [50%] | 32h | 32h |  |  | 3840 |  |
| 140 | 1.4.1.2.1.2 | Khối thu thập số liệu | 6d | 2011-09-02 08:00 A | 2011-09-09 17:00 A | 139 | 100% |  | 2011-09-02 08:00 | 2011-09-09 17:00 |  |  | Thắng VM [50%] | 24h | 24h |  |  | 2880 |  |
| 141 | 1.4.1.2.1.3 | Khối Xử lý số liệu | 6d | 2011-08-23 08:00 A | 2011-08-30 17:00 A |  | 100% |  | 2011-08-23 08:00 | 2011-08-30 17:00 |  |  | Hiếu NV [50%] | 24h | 24h | 1,800,000 | 1,800,000 | 2880 |  |
| 142 | 1.4.1.2.1.4 | Khối Xử lý số liệu - Workflow Activities | 6d | 2011-08-31 08:00 A | 2011-09-07 17:00 A | 141 | 100% |  | 2011-08-31 08:00 | 2011-09-07 17:00 |  |  | Hiếu NV [50%] | 24h | 24h | 1,800,000 | 1,800,000 | 2880 |  |
| 143 | 1.4.1.2.1.5 | Khối Application | 2d | 2011-09-08 08:00 A | 2011-09-09 17:00 A | 142 | 100% |  | 2011-09-08 08:00 | 2011-09-09 17:00 |  |  | Hiếu NV [50%] | 8h | 8h | 599,999.96 | 599,999.96 | 960 |  |
| 144 | 1.4.1.2.2 | **Xây dựng tài liệu Usecase** | 14d | 2011-08-23 08:00 A | 2011-09-09 17:00 A | 129 | 100% |  | 2011-08-23 08:00 | 2011-09-09 17:00 |  |  |  | 112h | 112h | 4,199,999.96 | 4,199,999.96 | 1440 |  |
| 145 | 1.4.1.2.2.1 | Khối Core | 8d | 2011-08-23 08:00 A | 2011-09-01 17:00 A |  | 100% |  | 2011-08-23 08:00 | 2011-09-01 17:00 |  |  | Thắng VM [50%] | 32h | 32h |  |  | 3840 |  |
| 146 | 1.4.1.2.2.2 | Khối thu thập số liệu | 6d | 2011-09-02 08:00 A | 2011-09-09 17:00 A | 145 | 100% |  | 2011-09-02 08:00 | 2011-09-09 17:00 |  |  | Thắng VM [50%] | 24h | 24h |  |  | 2880 |  |
| 147 | 1.4.1.2.2.3 | Khối xử lý số liệu | 6d | 2011-08-23 08:00 A | 2011-08-30 17:00 A |  | 100% |  | 2011-08-23 08:00 | 2011-08-30 17:00 |  |  | Hiếu NV [50%] | 24h | 24h | 1,800,000 | 1,800,000 | 2880 |  |
| 148 | 1.4.1.2.2.4 | Khối Xử lý số liệu - Workflow Activities | 6d | 2011-08-31 08:00 A | 2011-09-07 17:00 A | 147 | 100% |  | 2011-08-31 08:00 | 2011-09-07 17:00 |  |  | Hiếu NV [50%] | 24h | 24h | 1,800,000 | 1,800,000 | 2880 |  |
| 149 | 1.4.1.2.2.5 | Khối Application | 2d | 2011-09-08 08:00 A | 2011-09-09 17:00 A | 148 | 100% |  | 2011-09-08 08:00 | 2011-09-09 17:00 |  |  | Hiếu NV [50%] | 8h | 8h | 599,999.96 | 599,999.96 | 960 |  |
| 150 | 1.4.1.2.3 | Review SRS & Usecase | 3d | 2011-09-14 08:00 A | 2011-09-16 17:00 A | 138, 144, 157 | 100% |  | 2011-09-14 08:00 | 2011-09-16 17:00 |  |  | Hải VA; Hiếu NV; Thắng VM; Yến NH | 72h | 72h | 4,800,000 | 4,800,000 | 1440 |  |
| 151 | 1.4.1.2.4 | Chỉnh sửa SRS & Usecase | 4d | 2011-09-19 08:00 A | 2011-09-22 17:00 A | 150, 157 | 100% |  | 2011-09-19 08:00 | 2011-09-22 17:00 |  |  | Thắng VM; Hiếu NV | 32h | 32h | 2,399,999.84 | 2,399,999.84 | 1920 |  |
| 152 | 1.4.2 | **Thiết kế** | 42d? | 2011-08-25 08:00 A | 2011-10-21 17:00 |  | 38% | 26.03d? | 2011-08-25 08:00 | 2011-11-02 15:40 | 24.79d | 0d |  | 444h | 176h | 25,349,999.58 | 11,299,999.7 |  |  |
| 153 | 1.4.2.1 | **Kiến trúc hệ thống** | 20.5d | 2011-08-25 08:00 A | 2011-09-22 12:00 A | 129, 15, 12 | 100% |  | 2011-08-25 08:00 | 2011-09-22 12:00 |  |  |  | 152h | 152h | 10,699,999.74 | 10,699,999.74 |  |  |
| 154 | 1.4.2.1.1 | Phân tích lựa chọn công nghệ | 2d | 2011-08-25 08:00 A | 2011-08-26 17:00 A |  | 100% |  | 2011-08-25 08:00 | 2011-08-26 17:00 |  |  | Hải VA | 16h | 16h | 1,199,999.92 | 1,199,999.92 | 960 | PM |
| 155 | 1.4.2.1.2 | Xây dựng mô hình kiến trúc, chức năng hệ thống | 4d | 2011-08-29 08:00 A | 2011-09-01 17:00 A | 154 | 100% |  | 2011-08-29 08:00 | 2011-09-01 17:00 |  |  | Hải VA | 32h | 32h | 2,399,999.84 | 2,399,999.84 | 1920 |  |
| 156 | 1.4.2.1.3 | Xây dựng kiến trúc giao tiếp, mô hình thực thi, và mô hình triển khai | 3d | 2011-09-02 08:00 A | 2011-09-06 17:00 A | 155 | 100% |  | 2011-09-02 08:00 | 2011-09-06 17:00 |  |  | Hải VA | 24h | 24h | 1,800,000 | 1,800,000 | 1440 |  |
| 157 | 1.4.2.1.4 | Review kiến trúc hệ thống | 2d | 2011-09-12 08:00 A | 2011-09-13 17:00 A | 156, 138, 144 | 100% |  | 2011-09-12 08:00 | 2011-09-13 17:00 |  |  | Thắng VM; Hiếu NV; Hải VA; Yến NH | 48h | 48h | 3,200,000 | 3,200,000 | 960 |  |
| 158 | 1.4.2.1.5 | Chỉnh sửa kiến trúc hệ thống | 3d | 2011-09-19 08:00 A | 2011-09-21 17:00 A | 157, 150 | 100% |  | 2011-09-19 08:00 | 2011-09-21 17:00 |  |  | Hải VA | 24h | 24h | 1,800,000 | 1,800,000 | 1440 |  |
| 159 | 1.4.2.1.6 | Họp chốt Kiến trúc hệ thống với khách hàng | 0.5d | 2011-09-22 08:00 A | 2011-09-22 12:00 A | 158 | 100% |  | 2011-09-22 08:00 | 2011-09-22 12:00 |  |  | Customer; Hải VA | 8h | 8h | 299,999.98 | 299,999.98 | 240 |  |
| 160 | 1.4.2.2 | **Thiết kế GUI** | 4.5d? | 2011-09-23 08:00 A | 2011-09-29 12:00 | 153, 137 | 53% | 2.1d? | 2011-09-23 08:00 | 2011-09-29 12:00 | 24.79d | 0d |  | 44h | 16h | 749,999.98 |  |  |  |
| 161 | 1.4.2.2.1 | Thiết kế giao diện | 2d | 2011-09-23 08:00 A | 2011-09-26 17:00 A |  | 100% |  | 2011-09-23 08:00 | 2011-09-26 17:00 |  |  | Thắng VM | 16h | 16h |  |  | 960 |  |
| 162 | 1.4.2.2.2 | Review thiết kế giao diện | 0.75d | 2011-09-27 08:00 | 2011-09-27 15:00 | 161 |  |  | 2011-09-27 08:00 | 2011-09-27 15:00 | 24.79d | 0d | Hải VA; Thắng VM | 12h |  | 450,000 |  | 360 |  |
| 163 | 1.4.2.2.3 | Chỉnh sửa thiết kế giao diện | 0.5d | 2011-09-28 13:00 | 2011-09-28 17:00 | 162, 167 |  |  | 2011-09-28 13:00 | 2011-09-28 17:00 | 24.79d | 0d | Thắng VM | 4h |  |  |  | 240 |  |
| 164 | 1.4.2.2.4 | Họp chốt GUI với khách hàng | 0.5d? | 2011-09-29 08:00 | 2011-09-29 12:00 | 163, 168 |  |  | 2011-09-29 08:00 | 2011-09-29 12:00 | 24.79d |  | Customer; Thắng VM; Hải VA | 12h |  | 299,999.98 |  | 240 |  |

| ID | WBS | Task | Duration | Start | Finish | Predecessors | Complete | Remaining | Baseline 1 start | Baseline 1 finish | Total slack | Free slack | Resources | Work | Actual work | Cost | Actual cost | Text2 |
| --- | --- | --- | --- | --- | --- | --- | --- | --- | --- | --- | --- | --- | --- | --- | --- | --- | --- | --- |
| 165 | 1.4.2.3 | **Thiết kế DB** | 4d | 2011-09-23 08:00 A | 2011-09-28 17:00 | 153, 137 | 44% | 2.22d | 2011-09-23 08:00 | 2011-09-28 17:00 | 24.79d | 0.5d |  | 24h | 8h | 1,799,999.94 | 599,999.96 |  |
| 166 | 1.4.2.3.1 | Thiết kế Database | 1d | 2011-09-23 08:00 A | 2011-09-23 17:00 A |  | 100% |  | 2011-09-23 08:00 | 2011-09-23 17:00 |  |  | Hiếu NV | 8h | 8h | 599,999.96 | 599,999.96 | 480 |
| 167 | 1.4.2.3.2 | Review thiết kế DB | 0.75d | 2011-09-27 15:00 | 2011-09-28 12:00 | 166, 162 |  |  | 2011-09-27 15:00 | 2011-09-28 12:00 | 24.79d | 0d | Hải VA; Hiếu NV | 12h |  | 900,000 |  | 360 |
| 168 | 1.4.2.3.3 | Chỉnh sửa thiết kế DB | 0.5d | 2011-09-28 13:00 | 2011-09-28 17:00 | 167 |  |  | 2011-09-28 13:00 | 2011-09-28 17:00 | 24.79d | 0d | Hiếu NV | 4h |  | 299,999.98 |  | 240 |
| 169 | 1.4.2.4 | **Thiết kế class** | 16.5d | 2011-09-29 13:00 | 2011-10-21 17:00 | 160, 165, 153 |  |  | 2011-09-29 13:00 | 2011-11-02 15:40 | 24.79d |  |  | 224h |  | 12,099,999.92 |  |  |
| 170 | 1.4.2.4.1 | **Thiết kế module Core** | 6d | 2011-09-29 13:00 | 2011-10-07 12:00 |  |  |  | 2011-09-29 13:00 | 2011-10-17 12:00 | 24.79d | 0d |  | 96h |  | 5,599,999.92 |  |  |
| 171 | 1.4.2.4.1.1 | **Thiết kế class module Core (M0001. Mediation Core Libraries)** | 2d | 2011-09-29 13:00 | 2011-10-03 12:00 |  |  |  | 2011-09-29 13:00 | 2011-10-11 12:00 | 24.79d | 0d |  | 16h |  | 1,199,999.92 |  |  |
| 172 | 1.4.2.4.1.1.1 | Modularity | 2d | 2011-09-29 13:00 | 2011-10-03 12:00 |  |  |  | 2011-09-29 13:00 | 2011-10-03 12:00 | 24.79d |  | Hải VA | 16h |  | 1,199,999.92 |  | 960 |
| 173 | 1.4.2.4.1.2 | Review thiết kế module Core | 2d | 2011-10-03 13:00 | 2011-10-05 12:00 | 171 |  |  | 2011-10-11 13:00 | 2011-10-13 12:00 | 24.79d | 0d | Hiếu NV; Thắng VM; Hải VA; Yến NH | 64h |  | 3,200,000 |  | 960 |
| 174 | 1.4.2.4.1.3 | Chỉnh sửa thiết kế module Core | 2d | 2011-10-05 13:00 | 2011-10-07 12:00 | 173 |  |  | 2011-10-13 13:00 | 2011-10-17 12:00 | 24.79d |  | Hải VA | 16h |  | 1,200,000 |  | 960 |
| 175 | 1.4.2.4.2 | **Thiết kế khối các module Application** | 3d | 2011-10-07 13:00 | 2011-10-12 12:00 | 170 |  |  | 2011-10-17 13:00 | 2011-10-20 12:00 | 24.79d | 0d |  | 20h |  | 500,000 |  |  |
| 176 | 1.4.2.4.2.1 | **Thiết kế class của các module Application** | 2d | 2011-10-07 13:00 | 2011-10-11 12:00 |  |  |  | 2011-10-17 13:00 | 2011-10-19 12:00 | 24.79d | 0d |  | 4h |  |  |  |  |
| 177 | 1.4.2.4.2.1.1 | M0101. Simple File Logger | 2d | 2011-10-07 13:00 | 2011-10-11 12:00 |  |  |  | 2011-10-17 13:00 | 2011-10-19 12:00 | 24.79d |  | Thắng VM [25%] | 4h |  |  |  | 960 |
| 178 | 1.4.2.4.2.2 | Review thiết kế các module Application | 0.5d | 2011-10-11 13:00 | 2011-10-11 17:00 | 176 |  |  | 2011-10-19 13:00 | 2011-10-19 17:00 | 24.79d | 0d | Hải VA; Thắng VM; Yến NH | 12h |  | 500,000 |  | 240 |
| 179 | 1.4.2.4.2.3 | Chỉnh sửa thiết kế các module Application | 0.5d | 2011-10-12 08:00 | 2011-10-12 12:00 | 178 |  |  | 2011-10-20 08:00 | 2011-10-20 12:00 | 24.79d |  | Thắng VM | 4h |  |  |  | 240 |
| 180 | 1.4.2.4.3 | **Thiết kế khối Thu thập số liệu** | 4.5d | 2011-10-12 13:00 | 2011-10-18 17:00 | 175, 170 |  |  | 2011-10-20 13:00 | 2011-10-26 17:00 | 24.79d | 39d |  | 36h |  | 1,000,000 |  |  |
| 181 | 1.4.2.4.3.1 | **Thiết kế class của các module Collection Service** | 2.5d | 2011-10-12 13:00 | 2011-10-14 17:00 |  |  |  | 2011-10-20 13:00 | 2011-10-24 17:00 | 24.79d | 0d |  | 4h |  |  |  |  |
| 182 | 1.4.2.4.3.1.1 | M0301. Time FTP Source | 2.5d | 2011-10-12 13:00 | 2011-10-14 17:00 |  |  |  | 2011-10-20 13:00 | 2011-10-24 17:00 | 24.79d |  | Thắng VM [20%] | 4h |  |  |  | 1200 |
| 183 | 1.4.2.4.3.2 | Review thiết kế các module Collection | 1d | 2011-10-17 08:00 | 2011-10-17 17:00 | 181 |  |  | 2011-10-25 08:00 | 2011-10-25 17:00 | 24.79d | 0d | Hải VA; Yến NH; Thắng VM | 24h |  | 1,000,000 |  | 480 |
| 184 | 1.4.2.4.3.3 | Chỉnh sửa thiết kế các module Collection | 1d | 2011-10-18 08:00 | 2011-10-18 17:00 | 183 |  |  | 2011-10-26 08:00 | 2011-10-26 17:00 | 27.79d |  | Thắng VM | 8h |  |  |  | 480 |
| 185 | 1.4.2.4.4 | **Thiết kế khối Xử lý số liệu** | 10.5d | 2011-10-07 13:00 | 2011-10-21 17:00 | 170 |  |  | 2011-10-17 13:00 | 2011-11-02 15:40 | 24.79d | 4d |  | 72h |  | 5,000,000 |  |  |
| 186 | 1.4.2.4.4.1 | **Thiết kế class của các module Processing Service** | 4.17d | 2011-10-07 13:00 | 2011-10-13 14:20 |  |  |  | 2011-10-17 13:00 | 2011-10-27 15:40 | 27.12d | 2.33d |  | 8h |  | 600,000 |  |  |
| 187 | 1.4.2.4.4.1.1 | M0621. Oracle DB Archiver | 3.85d | 2011-10-07 13:00 | 2011-10-13 10:46 |  |  |  | 2011-10-17 13:00 | 2011-10-21 10:46 | 27.45d |  | Hiếu NV [13%] | 4h |  | 300,000 |  | 1846 |
| 188 | 1.4.2.4.4.1.2 | **Workflow Activities** | 4.17d | 2011-10-07 13:00 | 2011-10-13 14:20 |  |  |  | 2011-10-21 14:20 | 2011-10-27 15:40 | 27.12d |  |  | 4h |  | 300,000 |  | 480 |
| 189 | 1.4.2.4.4.1.2.1 | M3091. NetFlow CDR Default Encoder | 4.17d | 2011-10-07 13:00 | 2011-10-13 14:20 |  |  |  | 2011-10-21 14:20 | 2011-10-27 15:40 | 27.12d |  | Hiếu NV [12%] | 4h |  | 300,000 |  | 2000 |
| 190 | 1.4.2.4.4.2 | Review thiết kế các module Processing | 2d | 2011-10-18 08:00 | 2011-10-19 17:00 | 186, 183, 178 |  |  | 2011-10-27 15:40 | 2011-10-31 15:40 | 24.79d | 0d | Hải VA; Hiếu NV; Yến NH | 48h |  | 3,200,000 |  | 960 |
| 191 | 1.4.2.4.4.3 | Chỉnh sửa thiết kế các module Processing | 2d | 2011-10-20 08:00 | 2011-10-21 17:00 | 190 |  |  | 2011-10-31 15:40 | 2011-11-02 15:40 | 24.79d |  | Hiếu NV | 16h |  | 1,200,000 |  | 960 |

| ID | WBS | Task | Duration | Start | Finish | Predecessors | Baseline 1 start | Baseline 1 finish | Total slack | Free slack | Resources | Work | Cost | Text2 |
| --- | --- | --- | --- | --- | --- | --- | --- | --- | --- | --- | --- | --- | --- | --- |
| 192 | 1.4.3 | **Thực thi hệ thống** | 62d | 2011-10-28 08:00 | 2012-02-01 17:00 | 232 | 2011-11-08 15:40 | 2012-03-14 15:40 | 24.79d | 0d |  | 1064h | 47,400,000 |  |
| 193 | 1.4.3.1 | **Thực thi module Core** | 32d | 2011-10-28 08:00 | 2011-12-12 17:00 | 170 | 2011-11-08 15:40 | 2012-02-01 15:40 | 24.79d | 0d |  | 320h | 4,000,000 |  |
| 194 | 1.4.3.1.1 | **Thực thi module Core (M0001. Mediation Core Libraries)** | 8d | 2011-10-28 08:00 | 2011-11-08 17:00 |  | 2011-11-08 15:40 | 2011-12-20 15:40 | 24.79d | 0d |  | 64h |  |  |
| 195 | 1.4.3.1.1.1 | Modularity | 5d | 2011-10-28 08:00 | 2011-11-03 17:00 |  | 2011-11-08 15:40 | 2011-11-15 15:40 | 24.79d | 0d | Thắng VM | 40h |  | 2400 |
| 196 | 1.4.3.1.1.2 | Services | 3d | 2011-11-04 08:00 | 2011-11-08 17:00 | 195 | 2011-12-15 15:40 | 2011-12-20 15:40 | 24.79d |  | Thắng VM | 24h |  | 1440 |
| 197 | 1.4.3.1.2 | Review code module Core | 4d | 2011-11-09 08:00 | 2011-11-14 17:00 | 194 | 2011-12-20 15:40 | 2011-12-26 15:40 | 24.79d | 0d | Hải VA; Thắng VM; Yến NH | 96h | 4,000,000 | 1920 |
| 198 | 1.4.3.1.3 | Chỉnh sửa code module Core | 4d | 2011-11-15 08:00 | 2011-11-18 17:00 | 197 | 2011-12-26 15:40 | 2011-12-30 15:40 | 37.79d | 0d | Thắng VM | 32h |  | 1920 |
| 199 | 1.4.3.1.4 | Unit Test | 8d | 2011-11-21 08:00 | 2011-11-30 17:00 | 198 | 2011-12-30 15:40 | 2012-01-11 15:40 | 37.79d | 0d | Thắng VM | 64h |  | 3840 |
| 200 | 1.4.3.1.5 | Fix code | 8d | 2011-12-01 08:00 | 2011-12-12 17:00 | 199 | 2012-01-11 15:40 | 2012-02-01 15:40 | 37.79d |  | Thắng VM | 64h |  | 3840 |
| 201 | 1.4.3.2 | **Thực thi khối Thu thập số liệu** | 17d | 2011-12-13 08:00 | 2012-01-04 17:00 | 180, 193 | 2012-02-01 15:40 | 2012-03-13 15:40 | 37.79d | 13d |  | 184h | 3,000,000 |  |
| 202 | 1.4.3.2.1 | **Thực thi các module Collection Service** | 3d | 2011-12-13 08:00 | 2011-12-15 17:00 |  | 2012-02-01 15:40 | 2012-02-22 15:40 | 37.79d | 0d |  | 24h |  |  |
| 203 | 1.4.3.2.1.1 | M0301. Time FTP Source | 3d | 2011-12-13 08:00 | 2011-12-15 17:00 |  | 2012-02-01 15:40 | 2012-02-06 15:40 | 37.79d |  | Thắng VM | 24h |  | 1440 |
| 204 | 1.4.3.2.2 | Review code các module Collection | 3d | 2011-12-16 08:00 | 2011-12-20 17:00 | 202, 213 | 2012-02-22 15:40 | 2012-02-27 15:40 | 37.79d | 0d | Hải VA; Thắng VM; Yến NH | 72h | 3,000,000 | 1440 |
| 205 | 1.4.3.2.3 | Chỉnh sửa code các module Collection | 3d | 2011-12-21 08:00 | 2011-12-23 17:00 | 204 | 2012-02-27 15:40 | 2012-03-01 15:40 | 37.79d | 0d | Thắng VM | 24h |  | 1440 |
| 206 | 1.4.3.2.4 | Unit Test | 4d | 2011-12-26 08:00 | 2011-12-29 17:00 | 205 | 2012-03-01 15:40 | 2012-03-07 15:40 | 37.79d | 0d | Thắng VM | 32h |  | 1920 |
| 207 | 1.4.3.2.5 | Fix code | 4d | 2011-12-30 08:00 | 2012-01-04 17:00 | 206 | 2012-03-07 15:40 | 2012-03-13 15:40 | 37.79d |  | Thắng VM | 32h |  | 1920 |
| 208 | 1.4.3.3 | **Thực thi khối Xử lý số liệu** | 44d | 2011-10-28 08:00 | 2011-12-28 17:00 | 185 | 2011-11-08 15:40 | 2012-02-17 15:40 | 24.79d | 0d |  | 384h | 27,600,000 |  |
| 209 | 1.4.3.3.1 | **Thực thi các module Processing Service** | 4d | 2011-10-28 08:00 | 2011-11-02 17:00 |  | 2011-11-08 15:40 | 2011-12-22 15:40 | 32.79d | 8d |  | 32h | 2,400,000 |  |
| 210 | 1.4.3.3.1.1 | M0621. Oracle DB Archiver | 2d | 2011-10-28 08:00 | 2011-10-31 17:00 |  | 2011-11-08 15:40 | 2011-11-10 15:40 | 32.79d | 0d | Hiếu NV | 16h | 1,200,000 | 960 |
| 211 | 1.4.3.3.1.2 | **Workflow Activities** | 2d | 2011-11-01 08:00 | 2011-11-02 17:00 | 210 | 2011-11-30 15:40 | 2011-12-22 15:40 | 32.79d |  |  | 16h | 1,200,000 | 480 |
| 212 | 1.4.3.3.1.2.1 | M3001. NetFlow CDR Default Decoder | 2d | 2011-11-01 08:00 | 2011-11-02 17:00 |  | 2011-11-30 15:40 | 2011-12-02 15:40 | 32.79d |  | Hiếu NV | 16h | 1,200,000 | 960 |
| 213 | 1.4.3.3.2 | Review code các module Processing | 6d | 2011-11-15 08:00 | 2011-11-22 17:00 | 209, 197 | 2011-12-26 15:40 | 2012-01-03 15:40 | 24.79d | 0d | Hải VA; Hiếu NV; Yến NH | 144h | 9,600,000 | 2880 |
| 214 | 1.4.3.3.3 | Chỉnh sửa code các module Processing | 6d | 2011-11-23 08:00 | 2011-11-30 17:00 | 213 | 2012-01-03 15:40 | 2012-01-11 15:40 | 24.79d | 0d | Hiếu NV | 48h | 3,600,000 | 2880 |
| 215 | 1.4.3.3.4 | Unit Test | 10d | 2011-12-01 08:00 | 2011-12-14 17:00 | 214 | 2012-01-11 15:40 | 2012-02-03 15:40 | 24.79d | 0d | Hiếu NV | 80h | 6,000,000 | 4800 |
| 216 | 1.4.3.3.5 | Fix code | 10d | 2011-12-15 08:00 | 2011-12-28 17:00 | 215 | 2012-02-03 15:40 | 2012-02-17 15:40 | 24.79d |  | Hiếu NV | 80h | 6,000,000 | 4800 |

| ID | WBS | Task | Duration | Start | Finish | Predecessors | Baseline 1 start | Baseline 1 finish | Total slack | Free slack | Resources | Work | Cost | Text2 |
| --- | --- | --- | --- | --- | --- | --- | --- | --- | --- | --- | --- | --- | --- | --- |
| 217 | 1.4.3.4 | **Thực thi khối các module Application** | 18d | 2011-12-29 08:00 | 2012-02-01 17:00 | 208, 175 | 2012-02-17 15:40 | 2012-03-14 15:40 | 24.79d | 0d |  | 176h | 12,800,000 |  |
| 218 | 1.4.3.4.1 | **Thực thi các module Application** | 8d | 2011-12-29 08:00 | 2012-01-09 17:00 |  | 2012-02-17 15:40 | 2012-02-29 15:40 | 24.79d | 0d |  | 64h | 4,800,000 |  |
| 219 | 1.4.3.4.1.1 | M0101. Simple File Logger | 2d | 2011-12-29 08:00 | 2011-12-30 17:00 |  | 2012-02-17 15:40 | 2012-02-21 15:40 | 24.79d | 0d | Hiếu NV | 16h | 1,200,000 | 960 |
| 220 | 1.4.3.4.1.2 | M0111. Simple Form Logger | 2d | 2012-01-02 08:00 | 2012-01-03 17:00 | 219 | 2012-02-21 15:40 | 2012-02-23 15:40 | 24.79d | 0d | Hiếu NV | 16h | 1,200,000 | 960 |
| 221 | 1.4.3.4.1.3 | M0800. CDR Processing Service | 2d | 2012-01-04 08:00 | 2012-01-05 17:00 | 220 | 2012-02-23 15:40 | 2012-02-27 15:40 | 24.79d | 0d | Hiếu NV | 16h | 1,200,000 | 960 |
| 222 | 1.4.3.4.1.4 | M0820. CDR Processing Form | 2d | 2012-01-06 08:00 | 2012-01-09 17:00 | 221 | 2012-02-27 15:40 | 2012-02-29 15:40 | 24.79d |  | Hiếu NV | 16h | 1,200,000 | 960 |
| 223 | 1.4.3.4.2 | Review code các module Application | 2d | 2012-01-10 08:00 | 2012-01-11 17:00 | 218 | 2012-02-29 15:40 | 2012-03-02 15:40 | 24.79d | 0d | Hải VA; Hiếu NV; Yến NH | 48h | 3,200,000 | 960 |
| 224 | 1.4.3.4.3 | Chỉnh sửa code các module Application | 2d | 2012-01-12 08:00 | 2012-01-13 17:00 | 223 | 2012-03-02 15:40 | 2012-03-06 15:40 | 24.79d | 0d | Hiếu NV | 16h | 1,200,000 | 960 |
| 225 | 1.4.3.4.4 | Unit Test | 3d | 2012-01-16 08:00 | 2012-01-18 17:00 | 224 | 2012-03-06 15:40 | 2012-03-09 15:40 | 24.79d | 0d | Hiếu NV | 24h | 1,800,000 | 1440 |
| 226 | 1.4.3.4.5 | Fix code | 3d | 2012-01-19 08:00 | 2012-02-01 17:00 | 225 | 2012-03-09 15:40 | 2012-03-14 15:40 | 24.79d |  | Hiếu NV | 24h | 1,800,000 | 1440 |
| 227 | 1.4.4 | **Kiểm thử** | 121d | 2011-09-23 08:00 | 2012-03-20 17:00 |  | 2011-09-23 08:00 | 2012-05-04 15:40 | 24.79d | 0d |  | 736h | 26,749,999.43 |  |
| 228 | 1.4.4.1 | Lập Test Plan | 5d | 2011-09-23 08:00 | 2011-09-29 17:00 | 128 | 2011-09-23 08:00 | 2011-09-29 17:00 | 30.79d | 0d | Anh VTQ | 40h | 1,249,999.92 | 2400 |
| 229 | 1.4.4.2 | **Test Case** | 10d | 2011-09-30 08:00 | 2011-10-13 17:00 | 228 | 2011-09-30 08:00 | 2011-10-13 17:00 | 30.79d | 6d |  | 80h | 2,500,000 | 480 |
| 230 | 1.4.4.2.1 | Viết TestCases phần Integration Test | 4d | 2011-09-30 08:00 | 2011-10-05 17:00 |  | 2011-09-30 08:00 | 2011-10-05 17:00 | 30.79d | 0d | Anh VTQ | 32h | 1,000,000 | 1920 |
| 231 | 1.4.4.2.2 | Viết TestCases phần System Test | 6d | 2011-10-06 08:00 | 2011-10-13 17:00 | 230 | 2011-10-06 08:00 | 2011-10-13 17:00 | 30.79d |  | Anh VTQ | 48h | 1,500,000 | 2880 |
| 232 | 1.4.4.3 | Review Test Plan, Test Cases | 4d | 2011-10-24 08:00 | 2011-10-27 17:00 | 152, 229 | 2011-11-02 15:40 | 2011-11-08 15:40 | 24.79d | 0d | Hải VA; Anh VTQ; Yến NH; Hiếu NV; Thắng VM | 160h | 7,399,999.51 | 1920 |
| 233 | 1.4.4.4 | Chỉnh sửa Test Plan & Test Cases | 5d | 2011-10-28 08:00 | 2011-11-03 17:00 | 232 | 2011-11-08 15:40 | 2011-11-15 15:40 | 65.79d | 0d | Anh VTQ | 40h | 1,250,000 | 2400 |
| 234 | 1.4.4.5 | Integration Test | 4d | 2012-02-02 08:00 | 2012-02-07 17:00 | 233, 193, 201, 208, 217, 251 | 2012-03-14 15:40 | 2012-03-20 15:40 | 24.79d | 0d | Anh VTQ | 32h | 1,000,000 | 1920 |
| 235 | 1.4.4.6 | Fix lỗi Integration Test | 3d | 2012-02-08 08:00 | 2012-02-10 17:00 | 234 | 2012-03-20 15:40 | 2012-03-23 15:40 | 24.79d | 0d | Hiếu NV; Thắng VM | 48h | 1,800,000 | 1440 |
| 236 | 1.4.4.7 | Re-test | 2d | 2012-02-13 08:00 | 2012-02-14 17:00 | 235 | 2012-03-23 15:40 | 2012-03-27 15:40 | 24.79d | 0d | Anh VTQ | 16h | 500,000 | 960 |
| 237 | 1.4.4.8 | **System test** | 20d | 2012-02-15 08:00 | 2012-03-13 17:00 | 236 | 2012-03-27 15:40 | 2012-04-25 15:40 | 24.79d |  |  | 160h | 5,000,000 | 480 |
| 238 | 1.4.4.8.1 | Khối Core | 4d | 2012-02-15 08:00 | 2012-02-20 17:00 |  | 2012-03-27 15:40 | 2012-04-03 15:40 | 24.79d | 0d | Anh VTQ | 32h | 1,000,000 | 1920 |
| 239 | 1.4.4.8.2 | Khối thu thập số liệu | 4d | 2012-02-21 08:00 | 2012-02-24 17:00 | 238 | 2012-04-03 15:40 | 2012-04-09 15:40 | 24.79d | 0d | Anh VTQ | 32h | 1,000,000 | 1920 |
| 240 | 1.4.4.8.3 | Khối xử lý số liệu | 5d | 2012-02-27 08:00 | 2012-03-02 17:00 | 239 | 2012-04-09 15:40 | 2012-04-16 15:40 | 24.79d | 0d | Anh VTQ | 40h | 1,250,000 | 2400 |
| 241 | 1.4.4.8.4 | Khối Xử lý số liệu - Workflow Activities | 5d | 2012-03-05 08:00 | 2012-03-09 17:00 | 240 | 2012-04-16 15:40 | 2012-04-23 15:40 | 24.79d | 0d | Anh VTQ | 40h | 1,250,000 | 2400 |
| 242 | 1.4.4.8.5 | Khối Application | 2d | 2012-03-12 08:00 | 2012-03-13 17:00 | 241 | 2012-04-23 15:40 | 2012-04-25 15:40 | 24.79d | 0d | Anh VTQ | 16h | 500,000 | 960 |

| ID | WBS | Task | Duration | Start | Finish | Predecessors | Baseline 1 start | Baseline 1 finish | Total slack | Free slack | Resources | Work | Cost | Text2 | Process |
| --- | --- | --- | --- | --- | --- | --- | --- | --- | --- | --- | --- | --- | --- | --- | --- |
| 243 | 1.4.4.9 | **Fix lỗi System test** | 18d | 2012-02-21 08:00 | 2012-03-15 17:00 |  | 2012-04-03 15:40 | 2012-04-27 15:40 | 27.79d |  |  | 120h | 4,800,000 | 3360 |  |
| 244 | 1.4.4.9.1 | Khối Core | 3d | 2012-02-21 08:00 | 2012-02-23 17:00 | 238 | 2012-04-03 15:40 | 2012-04-06 15:40 | 37.79d | 13d | Thắng VM | 24h |  | 1440 |  |
| 245 | 1.4.4.9.2 | Khối thu thập số liệu | 3d | 2012-02-27 08:00 | 2012-02-29 17:00 | 239 | 2012-04-09 15:40 | 2012-04-12 15:40 | 38.79d |  | Thắng VM | 24h |  | 1440 |  |
| 246 | 1.4.4.9.3 | Khối xử lý số liệu | 4d | 2012-03-05 08:00 | 2012-03-08 17:00 | 240 | 2012-04-16 15:40 | 2012-04-20 15:40 | 32.79d |  | Hiếu NV | 32h | 2,400,000 | 1920 |  |
| 247 | 1.4.4.9.4 | Khối Xử lý số liệu - Workflow Activities | 4d | 2012-03-12 08:00 | 2012-03-15 17:00 | 241 | 2012-04-23 15:40 | 2012-04-27 15:40 | 27.79d |  | Hiếu NV | 32h | 2,400,000 | 1920 |  |
| 248 | 1.4.4.9.5 | Khối Application | 1d | 2012-03-14 08:00 | 2012-03-14 17:00 | 242 | 2012-04-25 15:40 | 2012-04-26 15:40 | 28.79d |  | Thắng VM | 8h |  | 480 |  |
| 249 | 1.4.4.10 | Re-test | 5d | 2012-03-14 08:00 | 2012-03-20 17:00 | 244, 242 | 2012-04-25 15:40 | 2012-05-04 15:40 | 24.79d |  | Anh VTQ | 40h | 1,250,000 | 2400 |  |
| 250 | 1.4.5 | **Tài liệu** | 23d | 2011-11-04 08:00 | 2011-12-06 17:00 | 152 | 2011-11-15 15:40 | 2011-12-16 15:40 | 65.79d | 68d |  | 232h | 8,750,000 |  |  |
| 251 | 1.4.5.1 | **Xây dựng tài liệu** | 16d | 2011-11-04 08:00 | 2011-11-25 17:00 | 233 | 2011-11-15 15:40 | 2011-12-07 15:40 | 65.79d | 41d |  | 128h | 4,000,000 |  |  |
| 252 | 1.4.5.1.1 | Tài liệu mô tả sản phẩm | 5d | 2011-11-04 08:00 | 2011-11-10 17:00 |  | 2011-11-15 15:40 | 2011-11-22 15:40 | 65.79d | 0d | Anh VTQ | 40h | 1,250,000 | 2400 |  |
| 253 | 1.4.5.1.2 | Tài liệu hướng dẫn cài đặt | 2d | 2011-11-11 08:00 | 2011-11-14 17:00 | 252 | 2011-11-22 15:40 | 2011-11-24 15:40 | 65.79d | 0d | Anh VTQ | 16h | 500,000 | 960 |  |
| 254 | 1.4.5.1.3 | Tài liệu hướng dẫn sử dụng | 5d | 2011-11-15 08:00 | 2011-11-21 17:00 | 253 | 2011-11-24 15:40 | 2011-12-01 15:40 | 65.79d | 0d | Anh VTQ | 40h | 1,250,000 | 2400 |  |
| 255 | 1.4.5.1.4 | Tài liệu hướng dẫn triển khai | 1d | 2011-11-22 08:00 | 2011-11-22 17:00 | 254 | 2011-12-01 15:40 | 2011-12-02 15:40 | 65.79d | 0d | Anh VTQ | 8h | 250,000 | 480 |  |
| 256 | 1.4.5.1.5 | Tài liệu đào tạo | 3d | 2011-11-23 08:00 | 2011-11-25 17:00 | 255 | 2011-12-02 15:40 | 2011-12-07 15:40 | 65.79d | 0d | Anh VTQ | 24h | 750,000 | 1440 |  |
| 257 | 1.4.5.2 | Review tài liệu | 3d | 2011-11-28 08:00 | 2011-11-30 17:00 | 256 | 2011-12-07 15:40 | 2011-12-12 15:40 | 92.79d | 0d | Hải VA; Anh VTQ; Yến NH | 72h | 3,750,000 | 1440 |  |
| 258 | 1.4.5.3 | Chỉnh sửa tài liệu | 4d | 2011-12-01 08:00 | 2011-12-06 17:00 | 257 | 2011-12-12 15:40 | 2011-12-16 15:40 | 92.79d |  | Anh VTQ | 32h | 1,000,000 | 1920 |  |
| 259 | 1.5 | **Triển khai, đào tạo** | 17.5d | 2012-03-21 08:00 | 2012-04-16 12:00 | 250, 227 | 2012-05-04 15:40 | 2012-05-30 10:40 | 24.79d |  |  | 192h | 6,900,000 |  |  |
| 260 | 1.5.1 | Đóng gói sản phẩm | 1d | 2012-03-21 08:00 | 2012-03-21 17:00 |  | 2012-05-04 15:40 | 2012-05-07 15:40 | 24.79d | 0d | Hải VA; Hiếu NV; Thắng VM | 24h | 1,200,000 | 480 |  |
| 261 | 1.5.2 | Final Inspection Package | 1d | 2012-03-22 08:00 | 2012-03-22 17:00 | 260 | 2012-05-07 15:40 | 2012-05-08 15:40 | 24.79d | 0d | Yến NH | 8h | 400,000 | 480 | PPQA |
| 262 | 1.5.3 | Lập kế hoạch triển khai | 1d | 2012-03-23 08:00 | 2012-03-23 17:00 | 261 | 2012-05-08 15:40 | 2012-05-09 15:40 | 24.79d | 0d | Hải VA | 8h | 600,000 | 480 |  |
| 263 | 1.5.4 | Review, điều chỉnh kế hoạch triển khai | 0.5d | 2012-03-26 08:00 | 2012-03-26 12:00 | 262 | 2012-05-09 15:40 | 2012-05-10 10:40 | 24.79d | 0d | Hải VA; Hiếu NV; Thắng VM; Yến NH | 16h | 800,000 | 240 |  |
| 264 | 1.5.5 | Cài đặt | 1d | 2012-03-26 13:00 | 2012-03-27 12:00 | 263 | 2012-05-10 10:40 | 2012-05-11 10:40 | 24.79d | 0d | Hiếu NV; Thắng VM | 16h | 600,000 | 480 |  |
| 265 | 1.5.6 | **Cấu hình hệ thống** | 3d | 2012-03-27 13:00 | 2012-03-30 12:00 | 264 | 2012-05-11 10:40 | 2012-05-16 10:40 | 24.79d | 0d |  | 24h | 850,000 |  |  |
| 266 | 1.5.6.1 | Cấu hình người dùng, phân quyền | 1d | 2012-03-27 13:00 | 2012-03-28 12:00 |  | 2012-05-11 10:40 | 2012-05-14 10:40 | 24.79d | 0d | Thắng VM | 8h |  | 480 |  |
| 267 | 1.5.6.2 | Cấu hình các dữ liệu danh mục | 1d | 2012-03-28 13:00 | 2012-03-29 12:00 | 266 | 2012-05-14 10:40 | 2012-05-15 10:40 | 24.79d | 0d | Hiếu NV | 8h | 600,000 | 480 |  |
| 268 | 1.5.6.3 | Các cấu hình khác | 1d | 2012-03-29 13:00 | 2012-03-30 12:00 | 267 | 2012-05-15 10:40 | 2012-05-16 10:40 | 24.79d |  | Anh VTQ | 8h | 250,000 | 480 |  |

| ID | WBS | Task | Duration | Start | Finish | Predecessors | Baseline 1 start | Baseline 1 finish | Total slack | Free slack | Resources | Work | Cost | Text2 |
| --- | --- | --- | --- | --- | --- | --- | --- | --- | --- | --- | --- | --- | --- | --- |
| 269 | 1.5.7 | **Đào tạo** | 5d | 2012-03-30 13:00 | 2012-04-09 12:00 | 265 | 2012-05-16 10:40 | 2012-05-23 10:40 | 24.79d | 0d |  | 56h | 2,450,000 |  |
| 270 | 1.5.7.1 | Xây dựng kế hoạch đào tạo | 1d | 2012-03-30 13:00 | 2012-04-03 12:00 |  | 2012-05-16 10:40 | 2012-05-17 10:40 | 24.79d | 0d | Anh VTQ | 8h | 250,000 | 480 |
| 271 | 1.5.7.2 | **Thực hiện đào tạo** | 4d | 2012-04-03 13:00 | 2012-04-09 12:00 | 270 | 2012-05-17 10:40 | 2012-05-23 10:40 | 24.79d |  |  | 48h | 2,200,000 |  |
| 272 | 1.5.7.2.1 | Đào tạo người dùng | 4d | 2012-04-03 13:00 | 2012-04-09 12:00 |  | 2012-05-17 10:40 | 2012-05-23 10:40 | 24.79d |  | Anh VTQ | 32h | 1,000,000 | 1920 |
| 273 | 1.5.7.2.2 | Đào tạo admin | 2d | 2012-04-03 13:00 | 2012-04-05 12:00 |  | 2012-05-17 10:40 | 2012-05-21 10:40 | 26.79d |  | Hiếu NV | 16h | 1,200,000 | 960 |
| 274 | 1.6.3 | UAT | 5d | 2012-04-09 13:00 | 2012-04-16 12:00 | 269 | 2012-05-23 10:40 | 2012-05-30 10:40 | 24.79d | 0d | Customer | 40h |  | 2400 |
